ID,Outline Level,Task Name,Duration,Start,Finish,Predecessors,Resource Names,Stakeholder,Percent Complete
1,1,Electronic Health Record (EHR) System,,2026-01-20,2026-04-10,,Edgar Tiburcio Gomez Moran,,0
2,2,Fase 1: Análisis,,2026-01-20,2026-02-10,,Edgar Tiburcio Gomez Moran,,0
3,3,Acta de constitución y kick-off del proyecto,3d,2026-01-20,2026-01-22,,Edgar Tiburcio Gomez Moran,,100
4,3,Matriz RACI (roles y responsabilidades),2d,2026-01-23,2026-01-24,3,Edgar Tiburcio Gomez Moran,,100
5,3,Requisitos funcionales,5d,2026-01-27,2026-02-02,4,Edgar Tiburcio Gomez Moran,,100
6,3,Requisitos no funcionales,3d,2026-01-27,2026-01-29,4,Edgar Tiburcio Gomez Moran,,100
7,3,Análisis de riesgos y amenazas,3d,2026-02-03,2026-02-05,5,Edgar Tiburcio Gomez Moran,,100
8,3,Casos de uso e historias de usuario,3d,2026-02-03,2026-02-05,5,Edgar Tiburcio Gomez Moran,,100
9,3,Reglas de negocio y diagrama de flujo de atención,3d,2026-02-06,2026-02-10,7,Edgar Tiburcio Gomez Moran,,100
10,3,Revisión con Stakeholders/Profesores - Fase Análisis,1d,2026-02-10,2026-02-10,"7,8,9",Edgar Tiburcio Gomez Moran,Profesores; Dept. Psicología; Dept. Enfermería; Dirección Académica,100
11,3,Entrega Fase Análisis (documentos y aceptación),1d,2026-02-10,2026-02-10,10,Edgar Tiburcio Gomez Moran,Profesores; Dirección Académica,100
12,2,Fase 2: Diseño,,2026-02-11,2026-02-28,,Edgar Tiburcio Gomez Moran,,0
13,3,Documentación API REST (OpenAPI 3.0),5d,2026-02-11,2026-02-17,11,Edgar Tiburcio Gomez Moran,,100
14,3,Diagrama ER y esquema de base de datos,4d,2026-02-11,2026-02-16,11,Edgar Tiburcio Gomez Moran,,100
15,3,Arquitectura del sistema (diseño detallado),3d,2026-02-18,2026-02-20,"13,14",Edgar Tiburcio Gomez Moran,,100
16,3,Wireframes pantallas principales,5d,2026-02-11,2026-02-17,11,Juan Enrique Castillo Ontiveros; Orlando de Jesús Casas Dávila,,100
17,3,Wireframes pantallas restantes,4d,2026-02-18,2026-02-23,16,Juan Enrique Castillo Ontiveros; Orlando de Jesús Casas Dávila,,0
18,3,Mockups de alta fidelidad,4d,2026-02-18,2026-02-23,16,Juan Enrique Castillo Ontiveros; Orlando de Jesús Casas Dávila,,80
19,3,Design system y guía de estilos,4d,2026-02-19,2026-02-24,15,Juan Enrique Castillo Ontiveros; Orlando de Jesús Casas Dávila,,100
20,3,Documento Esquema Web Services y Autenticación,2d,2026-02-18,2026-02-19,13,Edgar Tiburcio Gomez Moran,,100
21,3,Plan de Trabajo (MS Project) y estimación,2d,2026-02-24,2026-02-25,15,Edgar Tiburcio Gomez Moran,,100
22,3,Revisión con Stakeholders/Profesores - Fase Diseño,2d,2026-02-26,2026-02-27,"17,18,19,21",Edgar Tiburcio Gomez Moran,Profesores; Stakeholders EHR,0
23,3,Entrega Fase Diseño (documentos y aprobación),1d,2026-02-28,2026-02-28,22,Edgar Tiburcio Gomez Moran,Profesores; Dirección Académica,0
24,2,Fase 3: Desarrollo,,2026-03-02,2026-04-02,,Edgar Tiburcio Gomez Moran,,0
25,3,Setup backend (Express TypeScript Prisma PostgreSQL),3d,2026-03-02,2026-03-04,23,Edgar Tiburcio Gomez Moran,,0
26,3,Autenticación JWT y autorización RBAC,3d,2026-03-05,2026-03-09,25,Edgar Tiburcio Gomez Moran,,0
27,3,Endpoints módulo pacientes y usuarios,4d,2026-03-10,2026-03-13,26,Edgar Tiburcio Gomez Moran,,0
28,3,Endpoints módulo citas,3d,2026-03-16,2026-03-18,27,Edgar Tiburcio Gomez Moran,,0
29,3,Endpoints expedientes médicos,3d,2026-03-16,2026-03-18,27,Edgar Tiburcio Gomez Moran,,0
30,3,Revisión con Stakeholders/Profesores - MVP (Prototipo funcional),1d,2026-03-19,2026-03-19,"28,29",Edgar Tiburcio Gomez Moran,Profesores; Dept. Psicología; Dept. Enfermería,0
31,3,Endpoints medicamentos procedimientos enfermería,4d,2026-03-20,2026-03-25,30,Edgar Tiburcio Gomez Moran,,0
32,3,Endpoints terapia sesiones psicometría interconsultas,4d,2026-03-20,2026-03-25,30,Edgar Tiburcio Gomez Moran,,0
33,3,Endpoints reportes auditoría notificaciones,3d,2026-03-26,2026-03-30,"31,32",Edgar Tiburcio Gomez Moran,,0
34,3,Tests unitarios e integración backend,3d,2026-03-31,2026-04-02,33,Edgar Tiburcio Gomez Moran; Daniela Mayte Guevara Castillo; Carlos Alexis Rodriguez Garcia,,0
35,3,Setup frontend (React Vite Tailwind) y estructura,3d,2026-03-02,2026-03-04,23,Juan Enrique Castillo Ontiveros; Orlando de Jesús Casas Dávila,,0
36,3,Componentes de autenticación y layout (UI),4d,2026-03-05,2026-03-10,35,Juan Enrique Castillo Ontiveros,,0
37,3,Módulo pacientes y usuarios (UI),4d,2026-03-11,2026-03-16,36,Juan Enrique Castillo Ontiveros; Orlando de Jesús Casas Dávila,,0
38,3,Módulo citas y expedientes médicos (UI),4d,2026-03-17,2026-03-20,37,Orlando de Jesús Casas Dávila,,0
39,3,Módulos medicamentos terapia reportes (UI),4d,2026-03-17,2026-03-20,37,Juan Enrique Castillo Ontiveros; Orlando de Jesús Casas Dávila,,0
40,3,Integración Electron y empaquetado,3d,2026-03-23,2026-03-25,39,Orlando de Jesús Casas Dávila,,0
41,3,Tests E2E frontend,2d,2026-03-26,2026-03-27,40,Daniela Mayte Guevara Castillo; Carlos Alexis Rodriguez Garcia,,0
42,3,Revisión con Stakeholders/Profesores - Desarrollo completo,1d,2026-04-03,2026-04-03,"34,41",Edgar Tiburcio Gomez Moran,Profesores; Tech Lead; Dirección Académica,0
43,2,Fase 4: Testing y QA,,2026-04-04,2026-04-08,,Daniela Mayte Guevara Castillo; Carlos Alexis Rodriguez Garcia,,0
44,3,Pruebas de rendimiento y carga,2d,2026-04-04,2026-04-05,42,Daniela Mayte Guevara Castillo,,0
45,3,Auditoría de seguridad (revisión OWASP),2d,2026-04-04,2026-04-05,42,Edgar Tiburcio Gomez Moran; Carlos Alexis Rodriguez Garcia,,0
46,3,Pruebas de usabilidad con usuarios,2d,2026-04-06,2026-04-07,44,Daniela Mayte Guevara Castillo; Carlos Alexis Rodriguez Garcia; Juan Enrique Castillo Ontiveros; Orlando de Jesús Casas Dávila,,0
47,3,Corrección de bugs críticos y optimización,2d,2026-04-07,2026-04-08,"44,45,46",Edgar Tiburcio Gomez Moran; Juan Enrique Castillo Ontiveros; Orlando de Jesús Casas Dávila; Daniela Mayte Guevara Castillo; Carlos Alexis Rodriguez Garcia,,0
48,3,Revisión con Stakeholders/Profesores - QA y aceptación,1d,2026-04-08,2026-04-08,47,Edgar Tiburcio Gomez Moran,Profesores; QA; Stakeholders EHR,0
49,2,Fase 5: Despliegue y Cierre,,2026-04-09,2026-04-10,,Edgar Tiburcio Gomez Moran,,0
50,3,Configuración de ambiente de producción,1d,2026-04-09,2026-04-09,48,Edgar Tiburcio Gomez Moran,,0
51,3,Documentación de usuario y manual de administración,2d,2026-04-09,2026-04-10,48,Juan Enrique Castillo Ontiveros;Edgar Tiburcio Gomez Moran,,0
52,3,Capacitación a usuarios (Dept. Psicología y Enfermería),1d,2026-04-10,2026-04-10,"50,51",Edgar Tiburcio Gomez Moran;Juan Enrique Castillo Ontiveros; Orlando de Jesús Casas Dávila,Dept. Psicología; Dept. Enfermería,0
53,3,Transferencia de conocimiento y cierre administrativo,1d,2026-04-10,2026-04-10,52,Edgar Tiburcio Gomez Moran,Profesores; TI institucional,0
54,3,Entrega final del proyecto (10 Abril 2026),1d,2026-04-10,2026-04-10,53,Edgar Tiburcio Gomez Moran,Profesores; Sponsor; Dirección Académica,0
